Schedule from MS Project, 2022-06-07 to 2024-09-11, costs in £.

## Calendars

- Standard: Mon-Fri 08:00-12:00, 13:00-17:00; Sat-Sun off. Exceptions (off unless hours are given): 2022-12-22 to 2023-01-05 (Christmas Holidays 2022), 2023-12-22 to 2024-01-05 (Christmas Holidays 2023).

## Resources

| Resource | Rate |
| --- | --- |
| Building Office Foundations Team | 156.25 |
| Building Office Structures Team | 312.5 |
| Building Office Fittings Team | 125 |
| Building Airthrey Restaurant Foundations Team | 104.17 |
| Building Airthrey Restaurant Structures Team | 250 |
| Building Airthrey Restaurant Fittings Team | 312.5 |
| Building Lossburn Restaurant Foundations Team | 195.31 |
| Building Lossburn Restaurant Structures Team | 267.86 |
| Building Lossburn Restaurant Fittings Team | 375 |
| Building Balquharn Restaurant Foundations Team | 208.33 |
| Building Balquharn Restaurant Structures Team | 273.44 |
| Building Balquharn Restaurant Fittings Team | 450 |

## Schedule

| ID | Task | Duration | Start | Finish | Predecessors | Total slack | Free slack | Constraint | Resources | Work | Cost |
| --- | --- | --- | --- | --- | --- | --- | --- | --- | --- | --- | --- |
| 1 | Proposals put to Board Meeting | 2mo | 2022-06-07 | 2022-08-01 |  | 0d |  | start no earlier than 2022-06-07 |  |  |  |
| 2 | Purchase of Land | 6mo | 2022-08-02 | 2023-01-31 | 1 | 410d |  | start no earlier than 2022-08-01 |  |  | 12,000,000 |
| 3 | Planning Approval and Signing of Agreement | 6mo | 2022-08-02 | 2023-01-31 | 1 | 410d |  | start no earlier than 2022-08-01 |  |  | 200,000 |
| 4 | Architectural Designing | 6mo | 2022-08-02 | 2023-01-31 | 1 | 0d |  | start no earlier than 2022-08-01 |  |  | 500,000 |
| 5 | Constructing Access Road A - MacAllan | 30w | 2023-02-01 | 2023-08-29 | 4 | 110d | 0d | start no earlier than 2023-01-16 |  |  | 500,000 |
| 6 | Constructing Access Road B - MacAllan | 32w | 2023-02-01 | 2023-09-12 | 4 | 0d |  | start no earlier than 2010-05-24 |  |  | 1,000,000 |
| 7 | Skilifts 1 - Chairlift c | 25w | 2023-08-30 | 2024-03-06 | 5 | 135d |  | start no earlier than 2023-08-14 |  |  | 838,000 |
| 8 | Skilifts 2 - Chairlift d | 13w | 2023-08-30 | 2023-11-28 | 5 | 195d |  | start no earlier than 2023-08-14 |  |  | 576,000 |
| 9 | Skilifts 3 - Chairlift b | 19w | 2023-08-30 | 2024-01-24 | 5 | 165d |  | start no earlier than 2023-08-14 |  |  | 708,000 |
| 10 | Skilifts 4 - Chairlift b | 19w | 2023-09-13 | 2024-02-07 | 6 | 155d |  | start no earlier than 2023-08-28 |  |  | 708,000 |
| 11 | Skilifts 5 - Chairlift h | 11w | 2023-09-13 | 2023-11-28 | 6 | 195d |  | start no earlier than 2023-08-29 |  |  | 555,000 |
| 12 | Skilifts 6 - Chairlift b | 19w | 2023-09-13 | 2024-02-07 | 6 | 155d |  | start no earlier than 2023-08-29 |  |  | 708,000 |
| 13 | Skilifts 7 - Chairlift c | 25w | 2023-09-13 | 2024-03-20 | 6 | 55d | 0d | start no earlier than 2023-08-29 |  |  | 838,000 |
| 14 | Building Office/Shop Foundations | 8w | 2023-08-30 | 2023-10-24 | 5 | 150d | 0d | start no earlier than 2023-08-14 | Building Office Foundations Team | 320h | 50,000 |
| 15 | Building Office/Shop Structures | 8w | 2023-10-25 | 2023-12-19 | 14 | 150d | 0d | start no earlier than 2023-10-09 | Building Office Structures Team | 320h | 100,000 |
| 16 | Building Office/Shop Fittings | 6w | 2023-12-20 | 2024-02-14 | 15 | 150d |  | start no earlier than 2023-12-04 | Building Office Fittings Team | 240h | 30,000 |
| 17 | Building Airthrey Restaurant Foundations | 12w | 2023-08-30 | 2023-11-21 | 5 | 110d | 0d | start no earlier than 2023-08-14 | Building Airthrey Restaurant Foundations Team [200%] | 960h | 100,003.2 |
| 18 | Building Airthrey Restaurant Structures | 10w | 2023-11-22 | 2024-02-14 | 17 | 110d | 0d | start no earlier than 2023-09-25 | Building Airthrey Restaurant Structures Team [200%] | 800h | 200,000 |
| 19 | Building Airthrey Restaurant Fittings | 8w | 2024-02-15 | 2024-04-10 | 18 | 110d |  | start no earlier than 2023-10-30 | Building Airthrey Restaurant Fittings Team | 320h | 100,000 |
| 20 | Building Lossburn Restaurant Foundations | 16w | 2023-09-13 | 2024-01-17 | 6 | 50d | 0d | start no earlier than 2023-08-28 | Building Lossburn Restaurant Foundations Team [200%] | 1280h | 249,996.8 |
| 21 | Building Lossburn Restaurant Structures | 14w | 2024-01-18 | 2024-04-24 | 20 | 50d | 0d | start no earlier than 2023-12-18 | Building Lossburn Restaurant Structures Team [200%] | 1120h | 300,003.2 |
| 22 | Building Lossburn Restaurant Fittings | 10w | 2024-04-25 | 2024-07-03 | 21 | 50d |  | start no earlier than 2024-03-25 | Building Lossburn Restaurant Fittings Team | 400h | 150,000 |
| 23 | Building Balquharn Restaurant Foundations | 18w | 2023-09-13 | 2024-01-31 | 6 | 0d |  | start no earlier than 2023-08-29 | Building Balquharn Restaurant Foundations Team [200%] | 1440h | 299,995.2 |
| 24 | Building Balquharn Restaurant Structures | 16w | 2024-02-01 | 2024-05-22 | 23 | 0d |  | start no earlier than 2024-01-01 | Building Balquharn Restaurant Structures Team [200%] | 1280h | 350,003.2 |
| 25 | Building Balquharn Restaurant Fittings | 10w | 2024-05-23 | 2024-07-31 | 24 | 0d |  | start no earlier than 2024-04-22 | Building Balquharn Restaurant Fittings Team | 400h | 180,000 |
| 26 | Health & Safety Inspections | 3w | 2024-08-01 | 2024-08-21 | 25 | 0d |  | start no earlier than 2024-07-01 |  |  | 40,000 |
| 27 | Lift Inspections | 14w | 2024-03-21 | 2024-06-26 | 13 | 55d |  | start no earlier than 2024-02-19 |  |  | 70,000 |
| 28 | Final Training | 3w | 2024-08-22 | 2024-09-11 | 26 | 0d |  | start no earlier than 2024-07-22 |  |  | 40,000 |
| 29 | Marketing- Material Preparation | 13w | 2023-02-01 | 2023-05-02 | 4 | 210d | 0d | start no earlier than 2023-01-16 |  |  | 70,000 |
| 30 | Establishing Agreements with various agents around the UK | 12w | 2023-05-03 | 2023-07-25 | 29 | 210d | 0d | start no earlier than 2023-04-17 |  |  | 20,000 |
| 31 | Marketing Campaign Launch | 15w | 2023-07-26 | 2023-11-07 | 30 | 210d |  | start no earlier than 2023-07-10 |  |  | 200,000 |
| 32 | Overheads (Project Management & Communication) | 76w | 2023-02-01 | 2024-07-31 |  | 30d |  | start no earlier than 2023-02-01 |  |  | 1,140,000 |
